# Q2

Schedule from ProjectLibre, 2026-03-30 to 2026-05-08.

## Calendars

- Пятидневка: Mon-Fri 08:00-12:00, 13:00-17:00; Sat-Sun off.

## Resources

| Resource |
| --- |
| Не назначено |
| BE1 |
| BE2 |
| BE3 |
| FE1 |
| FE2 |
| QA1 |

## Schedule

| ID | WBS | Task | Duration | Start | Finish | Predecessors | Resources |
| --- | --- | --- | --- | --- | --- | --- | --- |
| 1 | 1 | BE новые роли | 3d? | 2026-03-30 | 2026-04-01 |  | BE3 |
| 2 | 2 | **Артефакты** | 9d? | 2026-03-30 | 2026-04-09 |  |  |
| 3 | 2.1 | BE артефакты (ссылки на документы) - БД + API | 3d? | 2026-03-30 | 2026-04-01 |  | BE2 |
| 4 | 2.2 | FE пилоты - блок артефакты | 3d? | 2026-04-02 | 2026-04-06 | 3 | FE1 |
| 5 | 2.3 | FE симуляции - блок артефакты | 6d? | 2026-04-02 | 2026-04-09 | 3 | FE2 [50%] |
| 6 | 3 | **Согласования/утверждения** | 30d? | 2026-03-30 | 2026-05-08 |  |  |
| 7 | 3.1 | BE процесс согласования и утверждения - БД+логика | 10d? | 2026-03-30 | 2026-04-10 |  | BE1 |
| 8 | 3.2 | BE ЖЦ пилота - согласование/утверждение | 5d? | 2026-04-13 | 2026-04-17 | 7 | BE2 |
| 9 | 3.3 | BE страницы согласования - АПИ, логика | 10d? | 2026-04-13 | 2026-04-24 | 7 | BE1 |
| 10 | 3.4 | FE страницы согласования | 10d? | 2026-04-27 | 2026-05-08 | 9 |  |
| 11 | 3.5 | BE страницы пакеты - АПИ, логика | 10d? | 2026-04-13 | 2026-04-24 | 7 |  |
| 12 | 3.6 | FE страницы пакеты | 10d? | 2026-04-27 | 2026-05-08 | 11 |  |
| 13 | 4 | **Скоркарты** | 25d? | 2026-03-30 | 2026-05-01 |  |  |
| 14 | 4.1 | BE скоркарты (включая шаблоны) - БД + API | 10d? | 2026-03-30 | 2026-04-10 |  |  |
| 15 | 4.2 | BE детальной скоркарты | 5d? | 2026-04-13 | 2026-04-17 | 14 |  |
| 16 | 4.3 | FE детальной скоркарты | 10d? | 2026-04-20 | 2026-05-01 | 15 |  |
| 17 | 4.4 | BE формы создания/редактирования скоркарты | 5d? | 2026-04-13 | 2026-04-17 | 14 |  |
| 18 | 4.5 | FE формы создания/редактирования скоркарты | 10d? | 2026-04-20 | 2026-05-01 | 17 |  |
| 19 | 5 | BE уведомления | 5d? | 2026-03-30 | 2026-04-03 |  |  |
| 20 | 6 | **Trace** | 10d? | 2026-03-30 | 2026-04-10 |  |  |
| 21 | 6.1 | BE БД + логика + API | 5d? | 2026-03-30 | 2026-04-03 |  |  |
| 22 | 6.2 | FE БД пилоты, симуляции, внедрения - блок связи | 5d? | 2026-04-06 | 2026-04-10 | 21 |  |
