| start | name | constraint_type | constraint_date | id | priority | duration | remaining_duration | outline_level | unique_id | created | resume | outline_number | type | effort_driven | fixed_cost_accrual | estimated | active | earned_value_method | parent_task_unique_id | finish | summary | successors | predecessors | critical |
| --- | --- | --- | --- | --- | --- | --- | --- | --- | --- | --- | --- | --- | --- | --- | --- | --- | --- | --- | --- | --- | --- | --- | --- | --- |
| 2026-03-30T08:00:00.0 | BE новые роли | AS_SOON_AS_POSSIBLE | 1970-01-01T00:00:00.0 | 1 | 500 | 86400 | 86400 | 1 | 1 | 2026-03-12T15:41:00.0 | 2026-03-30T08:00:00.0 | 1 | FIXED_UNITS | True | END | True | True | PERCENT_COMPLETE | -1 | 2026-04-01T17:00:00.0 |  |  |  |  |
| 2026-03-30T08:00:00.0 | Артефакты | AS_SOON_AS_POSSIBLE | 1970-01-01T00:00:00.0 | 2 | 500 | 259200 | 259200 | 1 | 2 | 2026-03-12T16:00:00.0 | 2026-03-30T08:00:00.0 | 2 | FIXED_UNITS | True | END | True | True | PERCENT_COMPLETE | -1 | 2026-04-09T17:00:00.0 | True |  |  |  |
| 2026-03-30T08:00:00.0 | BE артефакты (ссылки на документы) - БД + API | AS_SOON_AS_POSSIBLE | 1970-01-01T00:00:00.0 | 3 | 500 | 86400 | 86400 | 2 | 3 | 2026-03-12T16:00:00.0 | 2026-03-30T08:00:00.0 | 2.1 | FIXED_UNITS | True | END | True | True | PERCENT_COMPLETE | 2 | 2026-04-01T17:00:00.0 |  | 4 FS, 5 FS |  |  |
| 2026-04-02T08:00:00.0 | FE пилоты - блок артефакты | AS_SOON_AS_POSSIBLE | 1970-01-01T00:00:00.0 | 4 | 500 | 86400 | 86400 | 2 | 4 | 2026-03-12T16:02:00.0 | 2026-04-02T08:00:00.0 | 2.2 | FIXED_UNITS | True | END | True | True | PERCENT_COMPLETE | 2 | 2026-04-06T17:00:00.0 |  |  | 3 FS |  |
| 2026-04-02T08:00:00.0 | FE симуляции - блок артефакты | AS_SOON_AS_POSSIBLE | 1970-01-01T00:00:00.0 | 5 | 500 | 172800 | 172800 | 2 | 5 | 2026-03-12T16:03:00.0 | 2026-04-02T08:00:00.0 | 2.3 | FIXED_UNITS | True | END | True | True | PERCENT_COMPLETE | 2 | 2026-04-09T17:00:00.0 |  |  | 3 FS |  |
| 2026-03-30T08:00:00.0 | Согласования/утверждения | AS_SOON_AS_POSSIBLE | 1970-01-01T00:00:00.0 | 6 | 500 | 864000 | 864000 | 1 | 6 | 2026-03-12T16:09:00.0 | 2026-03-30T08:00:00.0 | 3 | FIXED_UNITS | True | END | True | True | PERCENT_COMPLETE | -1 | 2026-05-08T17:00:00.0 | True |  |  | True |
| 2026-03-30T08:00:00.0 | BE процесс согласования и утверждения - БД+логика | AS_SOON_AS_POSSIBLE | 1970-01-01T00:00:00.0 | 7 | 500 | 288000 | 288000 | 2 | 7 | 2026-03-12T16:03:00.0 | 2026-03-30T08:00:00.0 | 3.1 | FIXED_UNITS | True | END | True | True | PERCENT_COMPLETE | 6 | 2026-04-10T17:00:00.0 |  | 8 FS, 9 FS, 11 FS |  | True |
| 2026-04-13T08:00:00.0 | BE ЖЦ пилота - согласование/утверждение | AS_SOON_AS_POSSIBLE | 1970-01-01T00:00:00.0 | 8 | 500 | 144000 | 144000 | 2 | 8 | 2026-03-12T15:25:00.0 | 2026-04-13T08:00:00.0 | 3.2 | FIXED_UNITS | True | END | True | True | PERCENT_COMPLETE | 6 | 2026-04-17T17:00:00.0 |  |  | 7 FS |  |
| 2026-04-13T08:00:00.0 | BE страницы согласования - АПИ, логика | AS_SOON_AS_POSSIBLE | 1970-01-01T00:00:00.0 | 9 | 500 | 288000 | 288000 | 2 | 9 | 2026-03-12T16:11:00.0 | 2026-04-13T08:00:00.0 | 3.3 | FIXED_UNITS | True | END | True | True | PERCENT_COMPLETE | 6 | 2026-04-24T17:00:00.0 |  | 10 FS | 7 FS | True |
| 2026-04-27T08:00:00.0 | FE страницы согласования | AS_SOON_AS_POSSIBLE | 1970-01-01T00:00:00.0 | 10 | 500 | 288000 | 288000 | 2 | 10 | 2026-03-12T16:12:00.0 | 2026-04-27T08:00:00.0 | 3.4 | FIXED_UNITS | True | END | True | True | PERCENT_COMPLETE | 6 | 2026-05-08T17:00:00.0 |  |  | 9 FS | True |
| 2026-04-13T08:00:00.0 | BE страницы пакеты - АПИ, логика | AS_SOON_AS_POSSIBLE | 1970-01-01T00:00:00.0 | 11 | 500 | 288000 | 288000 | 2 | 11 | 2026-03-12T16:12:00.0 | 2026-04-13T08:00:00.0 | 3.5 | FIXED_UNITS | True | END | True | True | PERCENT_COMPLETE | 6 | 2026-04-24T17:00:00.0 |  | 12 FS | 7 FS | True |
| 2026-04-27T08:00:00.0 | FE страницы пакеты | AS_SOON_AS_POSSIBLE | 1970-01-01T00:00:00.0 | 12 | 500 | 288000 | 288000 | 2 | 12 | 2026-03-12T16:12:00.0 | 2026-04-27T08:00:00.0 | 3.6 | FIXED_UNITS | True | END | True | True | PERCENT_COMPLETE | 6 | 2026-05-08T17:00:00.0 |  |  | 11 FS | True |
| 2026-03-30T08:00:00.0 | Скоркарты | AS_SOON_AS_POSSIBLE | 1970-01-01T00:00:00.0 | 13 | 500 | 720000 | 720000 | 1 | 13 | 2026-03-12T15:56:00.0 | 2026-03-30T08:00:00.0 | 4 | FIXED_UNITS | True | END | True | True | PERCENT_COMPLETE | -1 | 2026-05-01T17:00:00.0 | True |  |  |  |
| 2026-03-30T08:00:00.0 | BE скоркарты (включая шаблоны) - БД + API | AS_SOON_AS_POSSIBLE | 1970-01-01T00:00:00.0 | 14 | 500 | 288000 | 288000 | 2 | 14 | 2026-03-12T15:29:00.0 | 2026-03-30T08:00:00.0 | 4.1 | FIXED_UNITS | True | END | True | True | PERCENT_COMPLETE | 13 | 2026-04-10T17:00:00.0 |  | 15 FS, 17 FS |  |  |
| 2026-04-13T08:00:00.0 | BE детальной скоркарты | AS_SOON_AS_POSSIBLE | 1970-01-01T00:00:00.0 | 15 | 500 | 144000 | 144000 | 2 | 15 | 2026-03-12T15:54:00.0 | 2026-04-13T08:00:00.0 | 4.2 | FIXED_UNITS | True | END | True | True | PERCENT_COMPLETE | 13 | 2026-04-17T17:00:00.0 |  | 16 FS | 14 FS |  |
| 2026-04-20T08:00:00.0 | FE детальной скоркарты | AS_SOON_AS_POSSIBLE | 1970-01-01T00:00:00.0 | 16 | 500 | 288000 | 288000 | 2 | 16 | 2026-03-12T17:01:00.0 | 2026-04-20T08:00:00.0 | 4.3 | FIXED_UNITS | True | END | True | True | PERCENT_COMPLETE | 13 | 2026-05-01T17:00:00.0 |  |  | 15 FS |  |
| 2026-04-13T08:00:00.0 | BE формы создания/редактирования скоркарты | AS_SOON_AS_POSSIBLE | 1970-01-01T00:00:00.0 | 17 | 500 | 144000 | 144000 | 2 | 17 | 2026-03-12T17:01:00.0 | 2026-04-13T08:00:00.0 | 4.4 | FIXED_UNITS | True | END | True | True | PERCENT_COMPLETE | 13 | 2026-04-17T17:00:00.0 |  | 18 FS | 14 FS |  |
| 2026-04-20T08:00:00.0 | FE формы создания/редактирования скоркарты | AS_SOON_AS_POSSIBLE | 1970-01-01T00:00:00.0 | 18 | 500 | 288000 | 288000 | 2 | 18 | 2026-03-12T15:56:00.0 | 2026-04-20T08:00:00.0 | 4.5 | FIXED_UNITS | True | END | True | True | PERCENT_COMPLETE | 13 | 2026-05-01T17:00:00.0 |  |  | 17 FS |  |
| 2026-03-30T08:00:00.0 | BE уведомления | AS_SOON_AS_POSSIBLE | 1970-01-01T00:00:00.0 | 19 | 500 | 144000 | 144000 | 1 | 19 | 2026-03-12T15:31:00.0 | 2026-03-30T08:00:00.0 | 5 | FIXED_UNITS | True | END | True | True | PERCENT_COMPLETE | -1 | 2026-04-03T17:00:00.0 |  |  |  |  |
| 2026-03-30T08:00:00.0 | Trace | AS_SOON_AS_POSSIBLE | 1970-01-01T00:00:00.0 | 20 | 500 | 288000 | 288000 | 1 | 20 | 2026-03-12T17:23:00.0 | 2026-03-30T08:00:00.0 | 6 | FIXED_UNITS | True | END | True | True | PERCENT_COMPLETE | -1 | 2026-04-10T17:00:00.0 | True |  |  |  |
| 2026-03-30T08:00:00.0 | BE БД + логика + API | AS_SOON_AS_POSSIBLE | 1970-01-01T00:00:00.0 | 21 | 500 | 144000 | 144000 | 2 | 21 | 2026-03-12T17:23:00.0 | 2026-03-30T08:00:00.0 | 6.1 | FIXED_UNITS | True | END | True | True | PERCENT_COMPLETE | 20 | 2026-04-03T17:00:00.0 |  | 22 FS |  |  |
| 2026-04-06T08:00:00.0 | FE БД пилоты, симуляции, внедрения - блок связи | AS_SOON_AS_POSSIBLE | 1970-01-01T00:00:00.0 | 22 | 500 | 144000 | 144000 | 2 | 22 | 2026-03-12T17:23:00.0 | 2026-04-06T08:00:00.0 | 6.2 | FIXED_UNITS | True | END | True | True | PERCENT_COMPLETE | 20 | 2026-04-10T17:00:00.0 |  |  | 21 FS |  |
