@startgantt
title ALL TASKS FAST - План разработки (opt: earliest finish of ALL tasks; derived from MVP v6.22)

' NOTE: this diagram may change sequencing constraints to reduce total makespan
' while still obeying PLANNING_LAWS.md (no >100% load).

' Source-of-truth for the approved MVP plan (frozen in v6.22):
'   planning/mvp/versions/v6.22/gantt/mvp_gantt_chart_v6.22.puml

' This file (v6.23) is the main plan with priority: earliest finish of ALL tasks.

' ------------------------------------------------------------
' Resources:
'   F1/F2 should not be idle if we can legally shift work earlier.
' ------------------------------------------------------------



' Source-of-truth for dev task decomposition/estimates:
'   planning/mvp/current/gantt/mvp_gantt_chart_current.puml

Project starts the 30th of march 2026
saturday are closed
sunday are closed

2026/05/01 is closed
2026/05/09 is closed
2026/06/12 is closed

printscale daily zoom 1.5
projectscale daily

<style>
ganttDiagram {
  task {
    BackGroundColor lightblue
  }
  milestone {
    BackGroundColor orange
    FontColor black
  }
}
</style>

'
' RESOURCES (team)
'   A1/A2: analysts
'   B1/B2/B3: backend devs
'   F1: frontend dev (100%)
'   F2: frontend dev (50% until 2026/05/01, then 100%)
'   NOTE: estimates are in 100% days; 50% resource will take 2x duration.
'   Rule for tasks crossing 2026/05/01: if most of the task is before May 1, treat whole task as 50%; otherwise treat whole task as 100%.
'   Q1: QA

'
' TRACKING VIEW (generated)
'   Source: /tmp/tj-out/mvp_actual.csv
'   Baseline: planning/mvp/current/gantt/mvp_gantt_chart_current.puml
'   Notes: this file is generated; edit progress in TaskJuggler (status/actual.tji)
'

-- 1) Роли --

[AN новые роли: роли/права/матрица] as [AN_ROLES] on {A1} lasts 1 days
[AN_ROLES] starts 2026/03/30
[AN_ROLES] is 0% completed

-- 2) Артефакты --

[AN артефакты (BE): модель/контракты/права] as [AN_ART_BE] on {A2} lasts 1 days
[AN_ART_BE] starts 2026/03/30
[AN_ART_BE] is 0% completed

[BE артефакты (ссылки на документы) - БД + API] as [BE_ART] on {B2} lasts 3 days
[BE_ART] starts 2026/03/31
[BE_ART] is 0% completed

[AN блок артефактов (FE): пилоты] as [AN_FE_PILOT_ART] on {A2} lasts 1 days
[AN_FE_PILOT_ART] starts 2026/03/31
[AN_FE_PILOT_ART] is 0% completed

[FE пилоты - блок артефакты + UI под ЖЦ] as [FE_PILOT_ART] on {F1} lasts 3 days
[FE_PILOT_ART] starts 2026/04/03
[FE_PILOT_ART] is 0% completed

[AN блок артефактов (FE): симуляции] as [AN_FE_SIM_ART] on {A2} lasts 1 days
[AN_FE_SIM_ART] starts 2026/04/01
[AN_FE_SIM_ART] is 0% completed

[FE симуляции - блок артефакты] as [FE_SIM_ART] on {F2:50%} lasts 1 days
[FE_SIM_ART] starts 2026/04/03
[FE_SIM_ART] is 0% completed

-- 3) Согласования/утверждения + Пакеты --

[AN процесс согласования/утверждения (BE core)] as [AN_AP_CORE] on {A1} lasts 2 days
[AN_AP_CORE] starts 2026/03/31
[AN_AP_CORE] is 0% completed

[BE процесс согласования и утверждения - БД+логика] as [BE_AP_CORE] on {B1} lasts 9 days
[BE_AP_CORE] starts 2026/04/02
[BE_AP_CORE] is 0% completed

[AN ЖЦ пилота: согласование/утверждение (BE)] as [AN_PILOT_LC_AP] on {A2} lasts 1 days
[AN_PILOT_LC_AP] starts 2026/04/02
[AN_PILOT_LC_AP] is 0% completed

[BE ЖЦ пилота - согласование/утверждение] as [BE_PILOT_LC_AP] on {B2} lasts 4 days
[BE_PILOT_LC_AP] starts 2026/04/28
[BE_PILOT_LC_AP] is 0% completed

[AN страница "Согласования" (BE): контракты/фильтры/действия] as [AN_AP_PAGE_BE] on {A1} lasts 1 days
[AN_AP_PAGE_BE] starts 2026/04/02
[AN_AP_PAGE_BE] is 0% completed

[BE страница "Согласования" - API, логика] as [BE_AP_PAGE] on {B1} lasts 2 days
[BE_AP_PAGE] starts 2026/04/16
[BE_AP_PAGE] is 0% completed

[AN страница "Согласования" (FE): UX/компоненты/edge-cases] as [AN_AP_PAGE_FE] on {A2} lasts 1 days
[AN_AP_PAGE_FE] starts 2026/04/03
[AN_AP_PAGE_FE] is 0% completed

[FE страница "Согласования"] as [FE_AP_PAGE] on {F1} lasts 9 days
[FE_AP_PAGE] starts 2026/04/09
[FE_AP_PAGE] is 0% completed

[AN страница "Пакеты" (BE): контракты/массовые действия] as [AN_PKG_BE] on {A1} lasts 1 days
[AN_PKG_BE] starts 2026/04/03
[AN_PKG_BE] is 0% completed

[AN страница "Пакеты" (FE): UX/компоненты/edge-cases] as [AN_PKG_FE] on {A2} lasts 1 days
[AN_PKG_FE] starts 2026/04/06
[AN_PKG_FE] is 0% completed

[FE страница "Пакеты"] as [FE_PKG_PAGE] on {F2:50%} lasts 19 days
[FE_PKG_PAGE] starts 2026/04/07
[FE_PKG_PAGE] is 0% completed

-- 4) Внедрения --

[AN внедрения (BE): модель/контракты/права] as [AN_DEP_BE] on {A1} lasts 1 days
[AN_DEP_BE] starts 2026/04/07
[AN_DEP_BE] is 0% completed

[BE внедрения - БД+API] as [BE_DEP_API] on {B3} lasts 3 days
[BE_DEP_API] starts 2026/04/07
[BE_DEP_API] is 0% completed

[AN ЖЦ внедрений (BE)] as [AN_DEP_LC] on {A2} lasts 1 days
[AN_DEP_LC] starts 2026/04/07
[AN_DEP_LC] is 0% completed

[BE ЖЦ внедрений] as [BE_DEP_LC] on {B3} lasts 1 days
[BE_DEP_LC] starts 2026/04/10
[BE_DEP_LC] is 0% completed

[AN список внедрений (FE)] as [AN_FE_DEP_LIST] on {A2} lasts 1 days
[AN_FE_DEP_LIST] starts 2026/04/08
[AN_FE_DEP_LIST] is 0% completed

[FE список внедрений] as [FE_DEP_LIST] on {F1} lasts 4 days
[FE_DEP_LIST] starts 2026/04/23
[FE_DEP_LIST] is 0% completed

[AN форма внедрения (создание/редактирование) (FE)] as [AN_FE_DEP_FORM] on {A1} lasts 1 days
[AN_FE_DEP_FORM] starts 2026/04/08
[AN_FE_DEP_FORM] is 0% completed

[FE форма внедрения (создание/редактирование)] as [FE_DEP_FORM] on {F1} lasts 4 days
[FE_DEP_FORM] starts 2026/04/30
[FE_DEP_FORM] is 0% completed

-- 5) Скоркарты (деталка + создание/редактирование) --

[AN скоркарты (BE): модель/шаблоны/валидаторы] as [AN_SC_BE] on {A1} lasts 1 days
[AN_SC_BE] starts 2026/04/07
[AN_SC_BE] is 0% completed

[BE скоркарты (включая шаблоны) - БД + API] as [BE_SC_API] on {B2} lasts 8 days
[BE_SC_API] starts 2026/04/08
[BE_SC_API] is 0% completed

[AN детальная скоркарты (BE)] as [AN_SCD_BE] on {A2} lasts 1 days
[AN_SCD_BE] starts 2026/04/09
[AN_SCD_BE] is 0% completed

[AN детальная скоркарты (FE)] as [AN_SCD_FE] on {A1} lasts 1 days
[AN_SCD_FE] starts 2026/04/13
[AN_SCD_FE] is 0% completed

[FE детальная скоркарты] as [FE_SCD] on {F1} lasts 9 days
[FE_SCD] starts 2026/05/08
[FE_SCD] is 0% completed

[AN форма скоркарты (BE)] as [AN_SCF_BE] on {A2} lasts 1 days
[AN_SCF_BE] starts 2026/04/13
[AN_SCF_BE] is 0% completed

[BE форма создания/редактирования скоркарты] as [BE_SCF] on {B1} lasts 5 days
[BE_SCF] starts 2026/04/20
[BE_SCF] is 0% completed

[AN форма скоркарты (FE)] as [AN_SCF_FE] on {A1} lasts 1 days
[AN_SCF_FE] starts 2026/04/14
[AN_SCF_FE] is 0% completed

[FE форма создания/редактирования скоркарты] as [FE_SCF] on {F2} lasts 9 days
[FE_SCF] starts 2026/05/06
[FE_SCF] is 0% completed

-- 6) Уведомления --

[AN уведомления: шаблоны/триггеры/получатели] as [AN_NOT] on {A2} lasts 1 days
[AN_NOT] starts 2026/04/14
[AN_NOT] is 0% completed

[BE уведомления] as [BE_NOT] on {B3} lasts 3 days
[BE_NOT] starts 2026/04/14
[BE_NOT] is 0% completed

-- 7) Trace (связанные сущности) --

[AN Trace (BE): модель связей/запросы/производительность] as [AN_TRACE_BE] on {A1} lasts 1 days
[AN_TRACE_BE] starts 2026/04/15
[AN_TRACE_BE] is 0% completed

[BE Trace - БД + логика + API] as [BE_TRACE] on {B2} lasts 1 days
[BE_TRACE] starts 2026/04/18
[BE_TRACE] is 0% completed

[AN Trace (FE): виджет блока связей] as [AN_TRACE_FE] on {A2} lasts 1 days
[AN_TRACE_FE] starts 2026/04/16
[AN_TRACE_FE] is 0% completed

[FE Trace - пилоты/симуляции/внедрения: блок связи] as [FE_TRACE] on {F1} lasts 2 days
[FE_TRACE] starts 2026/05/22
[FE_TRACE] is 0% completed

-- QA --

[QA подготовка (тест-план, тестовые данные, стенд)] as [QA_SETUP] on {Q1} lasts 2 days
[QA_SETUP] starts 2026/03/30
[QA_SETUP] is 0% completed

[QA Артефакты] as [QA_ART] on {Q1} lasts 1 days
[QA_ART] starts 2026/04/09
[QA_ART] is 0% completed

[QA Согласования + Пакеты] as [QA_AP] on {Q1} lasts 3 days
[QA_AP] starts 2026/05/05
[QA_AP] is 0% completed

[QA Скоркарты (деталка+форма)] as [QA_SC] on {Q1} lasts 2 days
[QA_SC] starts 2026/05/21
[QA_SC] is 0% completed

[QA Trace (блок связей)] as [QA_TRACE] on {Q1} lasts 1 days
[QA_TRACE] starts 2026/05/27
[QA_TRACE] is 0% completed

[QA Регрессия + E2E smoke] as [QA_REG] on {Q1} lasts 4 days
[QA_REG] starts 2026/06/09
[QA_REG] is 0% completed

[Milestone: MVP завершен] as [MVP_DONE] happens at 2026/06/16
[MVP_DONE] is 0% completed
-- AI агент (за рамками MVP) --

[BE чата AI - интеграция] as [BE_AI_CHAT] on {B1} lasts 3 days
[BE_AI_CHAT] starts 2026/04/25
[BE_AI_CHAT] is 0% completed

[FE UI для чата с AI агентом] as [FE_AI_CHAT_UI] on {F1} lasts 2 days
[FE_AI_CHAT_UI] starts 2026/05/27
[FE_AI_CHAT_UI] is 0% completed

-- Табличные риск-параметры (за рамками MVP) --

[BE табличных риск-параметров] as [BE_RISK_TABLE] on {B2} lasts 4 days
[BE_RISK_TABLE] starts 2026/04/21
[BE_RISK_TABLE] is 0% completed

[FE табличных риск-параметров] as [FE_RISK_TABLE] on {F2} lasts 9 days
[FE_RISK_TABLE] starts 2026/05/20
[FE_RISK_TABLE] is 0% completed

-- Доработка статусной модели симуляции (за рамками MVP) --

[BE статусной модели симуляции] as [BE_STAT_SIM] on {B3} lasts 6 days
[BE_STAT_SIM] starts 2026/04/17
[BE_STAT_SIM] is 0% completed

[FE статусной модели симуляции] as [FE_STAT_SIM] on {F1} lasts 2 days
[FE_STAT_SIM] starts 2026/06/01
[FE_STAT_SIM] is 0% completed

-- Симуляция снепшотов конфигурации (за рамками MVP) --

[BE симуляции снепшотов] as [BE_SIM_SNAP] on {B1} lasts 9 days
[BE_SIM_SNAP] starts 2026/05/04
[BE_SIM_SNAP] is 0% completed

[FE симуляции снепшотов] as [FE_SIM_SNAP] on {F1} lasts 7 days
[FE_SIM_SNAP] starts 2026/06/03
[FE_SIM_SNAP] is 0% completed

-- QA (non-MVP) --

[QA AI чат] as [QA_AI_CHAT] on {Q1} lasts 1 days
[QA_AI_CHAT] starts 2026/06/17
[QA_AI_CHAT] is 0% completed

[QA Табличные риск-параметры] as [QA_RISK_TABLE] on {Q1} lasts 2 days
[QA_RISK_TABLE] starts 2026/06/17
[QA_RISK_TABLE] is 0% completed

[QA Статусная модель симуляции] as [QA_STAT_SIM] on {Q1} lasts 1 days
[QA_STAT_SIM] starts 2026/06/22
[QA_STAT_SIM] is 0% completed

[QA Симуляция снепшотов] as [QA_SIM_SNAP] on {Q1} lasts 2 days
[QA_SIM_SNAP] starts 2026/06/22
[QA_SIM_SNAP] is 0% completed

[QA All: smoke/regression] as [QA_ALL_REG] on {Q1} lasts 2 days
[QA_ALL_REG] starts 2026/06/24
[QA_ALL_REG] is 0% completed

[ALL DONE] as [ALL_DONE] happens at 2026/06/26
[ALL_DONE] is 0% completed
@endgantt
